How a schedule from MS Project changed from version to version. A marks actual dates.

## Version 1 (saved 2016-12-29)

Note of the change: 进度表

| ID | WBS | Task | Duration | Start | Finish | Predecessors | Total float | Constraint |
| --- | --- | --- | --- | --- | --- | --- | --- | --- |
| 1 | 1 | **安卓，ios接口改造** | 22d | 2016-12-29 | 2017-02-02 |  |  |  |
| 2 |  | 安卓，ios接口改造 | 22d | 2016-12-29 | 2017-02-02 |  |  | start no earlier than 2016-12-29 |
| 3 | 1.2 | **安卓，ios接口改造** | 22d | 2016-12-29 | 2017-02-02 |  |  |  |
| 4 | 1.2.1 | **登陆注册相关接口** | 4d | 2016-12-29 | 2017-01-05 |  | 3.88d |  |
| 5 |  | 登陆接口重写及测试 | 1d | 2016-12-29 | 2016-12-30 |  | 3.88d |  |
| 6 |  | 注册接口重写及测试 | 1d | 2016-12-30 | 2017-01-03 | 5 | 3.88d |  |
| 7 |  | 忘记密码接口重写及测试 | 1d | 2017-01-03 | 2017-01-04 | 6 | 3.88d |  |
| 8 |  | 发送短信及验证码相关接口 | 1d | 2017-01-04 | 2017-01-05 | 7 | 3.88d |  |
| 9 | 1.2.2 | **app首页接口** | 5d | 2017-01-05 | 2017-01-11 | 7, 4 | 3.88d |  |
| 10 |  | 首页轮播图接口重写及测试 | 1d | 2017-01-05 | 2017-01-06 |  | 5.88d |  |
| 11 |  | 新品抢先接口重写及测试 | 1d | 2017-01-06 | 2017-01-07 | 10 | 5.88d |  |
| 12 |  | 省钱趴接口重写及测试 | 1d | 2017-01-07 | 2017-01-09 | 11 | 5.88d |  |
| 13 |  | 每日上线接口重写及测试 | 1d | 2017-01-05 | 2017-01-06 |  | 3.88d |  |
| 14 |  | 超实惠接口重写及测试 | 1d | 2017-01-06 | 2017-01-07 | 13 | 3.88d |  |
| 15 |  | 大牌秀接口重写及测试 | 1d | 2017-01-07 | 2017-01-09 | 14 | 3.88d |  |
| 16 |  | 特色好货接口重写及测试 | 1d | 2017-01-09 | 2017-01-10 | 15 | 3.88d |  |
| 17 |  | 为你推荐接口重写及测试 | 1d | 2017-01-10 | 2017-01-11 | 16 | 3.88d |  |
| 18 | 1.2.3 | **专题活动页面接口** | 4d | 2017-01-11 | 2017-01-17 | 17, 9 | 3.88d |  |
| 19 |  | 活动页面商品展示接口重写及测试 | 2d | 2017-01-11 | 2017-01-13 |  | 3.88d |  |
| 20 |  | 秒杀与限时抢活动相关接口 | 1d | 2017-01-13 | 2017-01-16 | 19 | 3.88d |  |
| 21 |  | 活动页面按字段排序接口重写及测试 | 1d | 2017-01-16 | 2017-01-17 | 19, 20 | 3.88d |  |
| 22 | 1.2.4 | **分类接口** | 2d | 2017-01-17 | 2017-01-19 | 18 | 3.88d |  |
| 23 |  | 分类展示接口 | 1d | 2017-01-17 | 2017-01-18 |  | 3.88d |  |
| 24 |  | 跨境专区分类特别展示接口 | 1d | 2017-01-18 | 2017-01-19 | 23 | 3.88d |  |
| 25 | 1.2.5 | **搜索接口** | 3d | 2017-01-19 | 2017-01-23 | 22 | 3.88d |  |
| 26 |  | 首页搜索查询接口 | 1d | 2017-01-19 | 2017-01-20 |  | 3.88d |  |
| 27 |  | 类目下搜索查询接口 | 2d | 2017-01-20 | 2017-01-23 | 26 | 3.88d |  |
| 28 | 1.2.6 | **商品列表页相关接口** | 7d | 2017-01-06 | 2017-01-16 |  |  |  |
| 29 |  | 商品列表展示及分页接口 | 1d | 2017-01-06 | 2017-01-07 |  | -3.12d |  |
| 30 |  | 商品详情页相关接口 | 1d | 2017-01-07 | 2017-01-09 | 29 | -3.12d |  |
| 31 |  | 商品基础信息相关接口 | 1d | 2017-01-09 | 2017-01-10 | 30 | -3.12d |  |
| 32 |  | 商品参数选择及库存数量相关接口 | 1d | 2017-01-10 | 2017-01-11 | 31 | -3.12d |  |
| 33 |  | 商品参与活动及优惠金额相关接口 | 1d | 2017-01-11 | 2017-01-12 | 32 | -3.12d |  |
| 34 |  | 商品主副图片轮播展示相关接口 | 0.5d | 2017-01-12 | 2017-01-12 | 33 | -3.12d |  |
| 35 |  | 商品详细介绍相关接口 | 0.5d | 2017-01-12 | 2017-01-13 | 34 | -3.12d |  |
| 36 |  | 商品跳转至订单结算相关接口 | 0.5d | 2017-01-13 | 2017-01-13 | 35 | -3.12d |  |
| 37 |  | 商品售后信息相关接口 | 0.5d | 2017-01-13 | 2017-01-16 | 36 | -3.12d |  |
| 38 | 1.2.7 | **购物车相关接口** | 3d | 2017-01-16 | 2017-01-19 | 37, 28 | -3.12d |  |
| 39 |  | 购物车权限控制 | 1d | 2017-01-16 | 2017-01-17 |  | -3.12d |  |
| 40 |  | 购物车加入功能 | 0.5d | 2017-01-17 | 2017-01-17 | 39 | -3.12d |  |
| 41 |  | 购物车编辑相关功能 | 0.5d | 2017-01-17 | 2017-01-18 | 40 | -3.12d |  |
| 42 |  | 购物车下推荐商品相关接口 | 0.5d | 2017-01-18 | 2017-01-18 | 41 | -3.12d |  |
| 43 |  | 购物车跳转至订单页相关接口 | 0.5d | 2017-01-18 | 2017-01-19 | 42 | -3.12d |  |
| 44 | 1.2.8 | **订单相关接口** | 7.5d | 2017-01-19 | 2017-02-03 | 38 | -3.12d |  |
| 45 |  | 订单结算页相关接口 | 1d | 2017-01-19 | 2017-01-20 |  | -3.12d |  |
| 46 |  | 查看订单相关接口 | 1d | 2017-01-20 | 2017-01-21 | 45 | -3.12d |  |
| 47 |  | 订单查询物流相关接口 | 1d | 2017-01-21 | 2017-01-23 | 46 | -3.12d |  |
| 48 |  | 支付订单接口 | 2d | 2017-01-23 | 2017-01-25 | 47 | -3.12d |  |
| 49 |  | 订单退换货相关接口 | 1.5d | 2017-01-25 | 2017-01-26 | 48 | -3.12d |  |
| 50 |  | 订单确认相关接口 | 0.5d | 2017-01-26 | 2017-02-03 | 49 | -3.12d |  |
| 51 |  | 确认收货相关接口 | 0.5d | 2017-02-03 | 2017-02-03 | 50 | -3.12d |  |
| 52 | 1.2.9 | **地址管理相关接口** | 2.5d | 2017-02-03 | 2017-02-07 | 44 | -3.12d |  |
| 53 |  | 新增地址相关接口 | 0.5d | 2017-02-03 | 2017-02-04 |  | -3.12d |  |
| 54 |  | 修改地址相关接口 | 0.5d | 2017-02-04 | 2017-02-04 | 53 | -3.12d |  |
| 55 |  | 删除地址相关接口 | 0.5d | 2017-02-04 | 2017-02-06 | 54 | -3.12d |  |
| 56 |  | 默认地址设置相关接口 | 0.5d | 2017-02-06 | 2017-02-06 | 55 | -3.12d |  |
| 57 |  | 地址与订单关联接口 | 0.5d | 2017-02-06 | 2017-02-07 | 56 | -3.12d |  |
| 58 | 2 | **他她乐PC端网站** | 86.5d | 2016-12-29 | 2017-04-26 |  | 0d |  |
| 59 | 2.1 | **前端框架搭建** | 16d | 2016-12-29 | 2017-01-20 |  |  |  |
| 60 |  | angularJs搭建 | 2d | 2016-12-29 | 2017-01-03 |  | 0d |  |
| 61 |  | 浏览器兼容性处理 | 3d | 2017-01-03 | 2017-01-06 | 60 | 0d |  |
| 62 |  | 分辨率兼容性处理 | 3d | 2017-01-06 | 2017-01-10 | 61 | 0d |  |
| 63 |  | 模块化公共组件搭建 | 2d | 2017-01-10 | 2017-01-12 | 62 | 0d |  |
| 64 |  | 数据渲染框架选型 | 2d | 2017-01-12 | 2017-01-16 | 63 | 0d |  |
| 65 |  | 模块化及路由设置封装 | 2d | 2017-01-16 | 2017-01-18 | 64 | 0d |  |
| 66 |  | 统一面向AOP过滤处理 | 2d | 2017-01-18 | 2017-01-20 | 65 | 0d |  |
| 67 | 2.2 | **首页** | 6d | 2017-01-20 | 2017-02-03 | 59 | 17d |  |
| 68 |  | TOP项部功能 | 1.5d | 2017-01-20 | 2017-01-21 |  | 12.5d |  |
| 69 |  | 首页BANNER图展示 | 1d | 2017-01-21 | 2017-01-23 | 68 | 12.5d |  |
| 70 |  | 导航 | 1d | 2017-01-23 | 2017-01-24 | 69 | 12.5d |  |

| ID | WBS | Task | Duration | Start | Finish | Predecessors | Total float | Constraint |
| --- | --- | --- | --- | --- | --- | --- | --- | --- |
| 71 |  | 商品分类分层导航展示 | 1d | 2017-01-24 | 2017-01-25 | 70 | 12.5d |  |
| 72 |  | 尾部功能 | 1.5d | 2017-01-25 | 2017-02-03 | 71 | 12.5d |  |
| 73 | 2.3 | **商品及活动分类页** | 4d | 2017-02-03 | 2017-02-08 | 67 | 17d |  |
| 74 |  | 居家生活、个护美妆、母婴用品、家电数码、今日限时购（秒杀） | 2d | 2017-02-03 | 2017-02-06 | 72 | 12.5d |  |
| 75 |  | 每日上新、省钱趴、团购 、其它二级分类页 | 2d | 2017-02-06 | 2017-02-08 | 74 | 12.5d |  |
| 76 | 2.4 | **商品详情展示与购买** | 12d | 2017-02-08 | 2017-02-23 | 73 | 17d |  |
| 77 |  | 商品主标题、商品副标题展示、商品促销信息展示 | 2d | 2017-02-08 | 2017-02-10 |  | 12.5d |  |
| 78 |  | 商品服务支持展示、商品参数信息 | 2d | 2017-02-10 | 2017-02-14 | 77 | 12.5d |  |
| 79 |  | 商品购买、加入购物车、商品收藏、同类型商品推荐 | 2d | 2017-02-14 | 2017-02-16 | 78 | 12.5d |  |
| 80 |  | 所属店铺信息展示 （店铺名称，联系客服、进入店铺） | 2d | 2017-02-16 | 2017-02-18 | 79 | 12.5d |  |
| 81 |  | 商品评价展示 | 2d | 2017-02-18 | 2017-02-21 | 80 | 12.5d |  |
| 82 |  | 商品详情、商品参数规格、售后服务信息 | 2d | 2017-02-21 | 2017-02-23 | 81 | 12.5d |  |
| 83 | 2.5 | **支付** | 7d | 2017-02-23 | 2017-03-04 | 76 | 17d |  |
| 84 |  | 银联支付 | 2d | 2017-02-23 | 2017-02-27 | 82 | 12.5d |  |
| 85 |  | 支付宝支付 （扫码支付） | 2.5d | 2017-02-27 | 2017-03-01 | 84 | 12.5d |  |
| 86 |  | 微信支付 （扫码支付） | 2.5d | 2017-03-01 | 2017-03-04 | 85 | 12.5d |  |
| 87 | 2.6 | **个人中心** | 13.5d | 2017-03-04 | 2017-03-21 | 83 | 17d |  |
| 88 |  | 我的个人信息管理（头像、昵称、生日等） | 2.5d | 2017-03-04 | 2017-03-07 | 86 | 12.5d |  |
| 89 |  | 会员等级 （会员等级，成长值） | 2d | 2017-03-07 | 2017-03-09 | 88 | 12.5d |  |
| 90 |  | 我的收藏 | 1.5d | 2017-03-09 | 2017-03-13 | 89 | 12.5d |  |
| 91 |  | 收货地址 | 1.5d | 2017-03-13 | 2017-03-14 | 90 | 12.5d |  |
| 92 |  | 订单中心 | 1.5d | 2017-03-14 | 2017-03-16 | 91 | 12.5d |  |
| 93 |  | 账户中心（账户余额，优惠劵，乐币） | 2.5d | 2017-03-16 | 2017-03-18 | 92 | 12.5d |  |
| 94 |  | 安全设置 (登录密码管理、支付密码、电话号码验证、邮箱验证等) | 2d | 2017-03-18 | 2017-03-21 | 93 | 12.5d |  |
| 95 |  | 帮助中心 | 2d | 2017-03-21 | 2017-03-23 | 87 | 12.5d |  |
| 96 | 2.8 | **优惠券** | 7.5d | 2017-03-23 | 2017-04-03 | 95 | 17d |  |
| 97 |  | 优惠劵种类管理 | 2d | 2017-03-23 | 2017-03-27 | 95 | 12.5d |  |
| 98 |  | 优惠劵管理（添加，编辑，查询，删除） | 2d | 2017-03-27 | 2017-03-29 | 97 | 12.5d |  |
| 99 |  | 优惠劵配置与发放管理（配置、审核、发放） | 2.5d | 2017-03-29 | 2017-04-01 | 98 | 12.5d |  |
| 100 |  | 店铺优惠劵的查看与管理 | 1d | 2017-04-01 | 2017-04-03 | 99 | 12.5d |  |
| 101 | 2.9 | **系统管理** | 3.5d | 2017-04-03 | 2017-04-06 | 96 | 17d |  |
| 102 |  | 站点设置 | 1d | 2017-04-03 | 2017-04-04 | 100 | 12.5d |  |
| 103 |  | 行政地区设置 | 1d | 2017-04-04 | 2017-04-05 | 102 | 12.5d |  |
| 104 |  | 物流配送优化 | 1.5d | 2017-04-05 | 2017-04-06 | 103 | 12.5d |  |
| 105 | 2.10 | **商品评论管理** | 8d | 2017-04-06 | 2017-04-17 | 101 | 17d |  |
| 106 |  | 评论规则设置 | 2d | 2017-04-06 | 2017-04-10 | 104 | 12.5d |  |
| 107 |  | 商品评论查看 | 1d | 2017-04-10 | 2017-04-11 | 106 | 12.5d |  |
| 108 |  | 商品评论管理（屏蔽） | 3d | 2017-04-11 | 2017-04-14 | 107 | 12.5d |  |
| 109 |  | 打分规则设置 | 2d | 2017-04-14 | 2017-04-17 | 108 | 12.5d |  |
| 110 | 2.11 | **主面板信息优化** | 7d | 2017-04-17 | 2017-04-26 | 105 | 17d |  |
| 111 |  | 用户登录信息 | 1.5d | 2017-04-17 | 2017-04-19 | 109 | 12.5d |  |
| 112 |  | 待办事项 | 1.5d | 2017-04-19 | 2017-04-20 | 111 | 12.5d |  |
| 113 |  | 统计数据展示 | 2d | 2017-04-20 | 2017-04-24 | 112 | 12.5d |  |
| 114 |  | 数据分析展示面板 | 2d | 2017-04-24 | 2017-04-26 | 113 | 12.5d |  |
| 115 | 2.12 | **搜索** | 9d | 2016-12-29 | 2017-01-11 |  |  |  |
| 116 |  | 首页搜索框（模糊搜索） | 2d | 2016-12-30 | 2017-01-04 |  | 0d | start no earlier than 2016-12-30 |
| 117 |  | 关键字搜索、组合搜索 | 4d | 2017-01-04 | 2017-01-09 | 116 | 0d |  |
| 118 |  | 搜索结果页面 | 2d | 2017-01-09 | 2017-01-11 | 117 | 0d |  |
| 119 | 2.13 | **蜂享购对接 （加入投资兑换）** | 5d | 2017-01-11 | 2017-01-18 | 115 | 16.5d |  |
| 120 |  | 商品详情页 0元购 | 2.5d | 2017-01-11 | 2017-01-13 |  | 12d |  |
| 121 |  | 0元购详情页 | 2.5d | 2017-01-13 | 2017-01-18 | 120 | 12d |  |
| 122 | 2.14 | **订单** | 13d | 2017-01-18 | 2017-02-09 | 119 | 16.5d |  |
| 123 |  | 我的订单 | 3d | 2017-01-18 | 2017-01-21 |  | 12d |  |
| 124 |  | 订单支付 | 2d | 2017-01-21 | 2017-01-24 | 123 | 12d |  |
| 125 |  | 订单评价（商品、店铺打分和文字评价） | 2.5d | 2017-01-24 | 2017-01-26 | 124 | 12d |  |
| 126 |  | 退款、退换货 | 2.5d | 2017-01-26 | 2017-02-06 | 125 | 12d |  |
| 127 |  | 订单回收站 | 1d | 2017-02-06 | 2017-02-07 | 126 | 12d |  |
| 128 |  | 订单物流跟踪 | 2d | 2017-02-07 | 2017-02-09 | 127 | 12d |  |
| 129 | 2.15 | **购物车** | 5d | 2017-02-09 | 2017-02-16 | 122 | 16.5d |  |
| 130 |  | 购物车 | 3.5d | 2017-02-09 | 2017-02-14 |  | 12d |  |
| 131 |  | 购物车下拉的猜你喜欢商品列表 | 1.5d | 2017-02-14 | 2017-02-16 | 130 | 12d |  |
| 132 | 2.16 | **登录与注册** | 4d | 2017-02-16 | 2017-02-21 | 129 | 16.5d |  |
| 133 |  | 登录 | 1d | 2017-02-16 | 2017-02-17 |  | 12d |  |
| 134 |  | 注册 | 1d | 2017-02-17 | 2017-02-18 | 133 | 12d |  |
| 135 |  | 忘记密码 | 2d | 2017-02-18 | 2017-02-21 | 134 | 12d |  |
| 136 | 2.17 | **店铺** | 10d | 2017-02-21 | 2017-03-06 | 132 | 16.5d |  |
| 137 |  | 店铺展示 | 3d | 2017-02-21 | 2017-02-24 |  | 12d |  |
| 138 |  | 店铺客服 | 2.5d | 2017-02-24 | 2017-02-28 | 137 | 12d |  |
| 139 |  | 店铺收藏 | 2d | 2017-02-28 | 2017-03-02 | 138 | 12d |  |
| 140 |  | 店铺详情 | 2.5d | 2017-03-02 | 2017-03-06 | 139 | 12d |  |

| ID | WBS | Task | Duration | Start | Finish | Predecessors | Total float | Constraint |
| --- | --- | --- | --- | --- | --- | --- | --- | --- |
| 141 | 2.18 | **促销&活动** | 16d | 2017-03-06 | 2017-03-27 | 136 | 16.5d |  |
| 142 |  | 省钱趴 | 3d | 2017-03-06 | 2017-03-09 |  | 12d |  |
| 143 |  | 限时购（秒杀） | 3d | 2017-03-09 | 2017-03-14 | 142 | 12d |  |
| 144 |  | 满减 （每满XX减XX） | 3d | 2017-03-14 | 2017-03-17 | 143 | 12d |  |
| 145 |  | 满赠 （结合优惠券） | 3d | 2017-03-17 | 2017-03-21 | 144 | 12d |  |
| 146 |  | 团购 | 4d | 2017-03-21 | 2017-03-27 | 145 | 12d |  |
| 147 | 3 | **后台管理** | 25d | 2017-03-27 | 2017-04-27 |  | 16.5d |  |
| 148 | 3.1 | **促销&活动管理优化** | 9d | 2017-03-27 | 2017-04-06 | 141 | 16.5d |  |
| 149 |  | 活动管理方式界面优化 | 2d | 2017-03-27 | 2017-03-29 |  | 12d |  |
| 150 |  | 满减（每满XX减XX）配置 | 2d | 2017-03-29 | 2017-03-31 | 149 | 12d |  |
| 151 |  | 满赠配置（结合优惠券） | 2.5d | 2017-03-31 | 2017-04-03 | 150 | 12d |  |
| 152 |  | 团购配置 | 2.5d | 2017-04-03 | 2017-04-06 | 151 | 12d |  |
| 153 | 3.2 | **网站管理** | 9.5d | 2017-04-06 | 2017-04-18 | 148 | 16.5d |  |
| 154 |  | 文章分类 | 1.5d | 2017-04-06 | 2017-04-07 |  | 12d |  |
| 155 |  | 文章管理 | 2d | 2017-04-07 | 2017-04-11 | 154 | 12d |  |
| 156 |  | 广告管理 | 1.5d | 2017-04-11 | 2017-04-13 | 155 | 12d |  |
| 157 |  | 首页管理 | 1.5d | 2017-04-13 | 2017-04-14 | 156 | 12d |  |
| 158 |  | 导航管理 | 1.5d | 2017-04-14 | 2017-04-17 | 157 | 12d |  |
| 159 |  | 友情链接管理 | 1.5d | 2017-04-17 | 2017-04-18 | 158 | 12d |  |
| 160 | 3.3 | **会员系统** | 6.5d | 2017-04-18 | 2017-04-27 | 153 | 16.5d |  |
| 161 |  | 会员等级设置 | 2d | 2017-04-18 | 2017-04-20 |  | 12d |  |
| 162 |  | 会员成长值规则设置 | 2.5d | 2017-04-20 | 2017-04-25 | 161 | 12d |  |
| 163 |  | 乐币设置 | 2d | 2017-04-25 | 2017-04-27 | 162 | 12d |  |
| 164 | 4 | **他她乐PC端接口** | 106.5d | 2016-12-26 | 2017-05-17 |  | 0d |  |
| 165 | 4.1 | **重新编写2.0前台所有接口（PC）** | 23d | 2017-02-07 | 2017-03-08 |  | 2d |  |
| 166 | 4.1.1 | **登陆注册相关接口** | 5d | 2017-02-07 | 2017-02-14 |  | 51d |  |
| 167 |  | 登陆接口重写及测试 | 1d | 2017-02-07 | 2017-02-08 |  | 51d | start no earlier than 2017-02-07 |
| 168 |  | 注册接口重写及测试 | 1d | 2017-02-08 | 2017-02-09 | 167 | 51d |  |
| 169 |  | 忘记密码接口重写及测试 | 1d | 2017-02-09 | 2017-02-10 | 168 | 51d |  |
| 170 |  | 发送短信及验证码相关接口 | 2d | 2017-02-10 | 2017-02-14 | 169 | 51d |  |
| 171 | 4.1.2 | **app首页接口** | 8d | 2017-02-14 | 2017-02-23 | 166, 169 | 55.5d |  |
| 172 |  | 首页轮播图接口重写及测试 | 1d | 2017-02-14 | 2017-02-15 |  | 51d |  |
| 173 |  | 新品抢先接口重写及测试 | 1d | 2017-02-15 | 2017-02-16 | 172 | 51d |  |
| 174 |  | 省钱趴接口重写及测试 | 1d | 2017-02-16 | 2017-02-17 | 173 | 51d |  |
| 175 |  | 每日上线接口重写及测试 | 1d | 2017-02-17 | 2017-02-18 | 174 | 51d |  |
| 176 |  | 超实惠接口重写及测试 | 1d | 2017-02-18 | 2017-02-20 | 175 | 51d |  |
| 177 |  | 大牌秀接口重写及测试 | 1d | 2017-02-20 | 2017-02-21 | 176 | 51d |  |
| 178 |  | 特色好货接口重写及测试 | 1d | 2017-02-21 | 2017-02-22 | 177 | 51d |  |
| 179 |  | 为你推荐接口重写及测试 | 1d | 2017-02-22 | 2017-02-23 | 178 | 51d |  |
| 180 | 4.1.3 | **专题活动页面接口** | 5d | 2017-02-23 | 2017-03-02 | 171, 179 | 55.5d |  |
| 181 |  | 活动页面商品展示接口重写及测试 | 2d | 2017-02-23 | 2017-02-27 |  | 51d |  |
| 182 |  | 秒杀与限时抢活动相关接口 | 2d | 2017-02-27 | 2017-03-01 | 181 | 51d |  |
| 183 |  | 活动页面按字段排序接口重写及测试 | 1d | 2017-03-01 | 2017-03-02 | 181, 182 | 51d |  |
| 184 | 4.1.4 | **分类接口** | 3d | 2017-03-02 | 2017-03-06 | 180 | 55.5d |  |
| 185 |  | 分类展示接口 | 2d | 2017-03-02 | 2017-03-04 |  | 51d |  |
| 186 |  | 跨境专区分类特别展示接口 | 1d | 2017-03-04 | 2017-03-06 | 185 | 51d |  |
| 187 | 4.1.5 | **搜索接口** | 2d | 2017-03-06 | 2017-03-08 | 184 | 55.5d |  |
| 188 |  | 首页搜索查询接口 | 1d | 2017-03-06 | 2017-03-07 |  | 51d |  |
| 189 |  | 类目下搜索查询接口 | 1d | 2017-03-07 | 2017-03-08 | 188 | 51d |  |
| 190 | 4.1.6 | **商品列表页相关接口** | 7d | 2017-02-09 | 2017-02-18 |  |  |  |
| 191 |  | 商品列表展示及分页接口 | 1d | 2017-02-09 | 2017-02-10 |  | 0d |  |
| 192 |  | 商品详情页相关接口 | 1d | 2017-02-10 | 2017-02-13 | 191 | 0d |  |
| 193 |  | 商品基础信息相关接口 | 1d | 2017-02-13 | 2017-02-14 | 192 | 0d |  |
| 194 |  | 商品参数选择及库存数量相关接口 | 1d | 2017-02-14 | 2017-02-15 | 193 | 0d |  |
| 195 |  | 商品参与活动及优惠金额相关接口 | 1d | 2017-02-15 | 2017-02-16 | 194 | 0d |  |
| 196 |  | 商品主副图片轮播展示相关接口 | 0.5d | 2017-02-16 | 2017-02-16 | 195 | 0d |  |
| 197 |  | 商品详细介绍相关接口 | 0.5d | 2017-02-16 | 2017-02-17 | 196 | 0d |  |
| 198 |  | 商品跳转至订单结算相关接口 | 0.5d | 2017-02-17 | 2017-02-17 | 197 | 0d |  |
| 199 |  | 商品售后信息相关接口 | 0.5d | 2017-02-17 | 2017-02-18 | 198 | 0d |  |
| 200 | 4.1.7 | **购物车相关接口** | 3d | 2017-02-18 | 2017-02-22 | 190, 199 | 56.5d |  |
| 201 |  | 购物车权限控制 | 1d | 2017-02-18 | 2017-02-20 |  | 52d |  |
| 202 |  | 购物车加入功能 | 0.5d | 2017-02-20 | 2017-02-20 | 201 | 52d |  |
| 203 |  | 购物车编辑相关功能 | 0.5d | 2017-02-20 | 2017-02-21 | 202 | 52d |  |
| 204 |  | 购物车下推荐商品相关接口 | 0.5d | 2017-02-21 | 2017-02-21 | 203 | 52d |  |
| 205 |  | 购物车跳转至订单页相关接口 | 0.5d | 2017-02-21 | 2017-02-22 | 204 | 52d |  |
| 206 | 4.1.8 | **订单相关接口** | 7.5d | 2017-02-22 | 2017-03-03 | 200 | 56.5d |  |
| 207 |  | 订单结算页相关接口 | 1d | 2017-02-22 | 2017-02-23 |  | 52d |  |
| 208 |  | 查看订单相关接口 | 1d | 2017-02-23 | 2017-02-24 | 207 | 52d |  |
| 209 |  | 订单查询物流相关接口 | 1d | 2017-02-24 | 2017-02-27 | 208 | 52d |  |
| 210 |  | 支付订单接口 | 2d | 2017-02-27 | 2017-03-01 | 209 | 52d |  |

| ID | WBS | Task | Duration | Start | Finish | Predecessors | Total float | Constraint |
| --- | --- | --- | --- | --- | --- | --- | --- | --- |
| 211 |  | 订单退换货相关接口 | 1.5d | 2017-03-01 | 2017-03-02 | 210 | 52d |  |
| 212 |  | 订单确认相关接口 | 0.5d | 2017-03-02 | 2017-03-03 | 211 | 52d |  |
| 213 |  | 确认收货相关接口 | 0.5d | 2017-03-03 | 2017-03-03 | 212 | 52d |  |
| 214 | 4.1.9 | **地址管理相关接口** | 2.5d | 2017-03-03 | 2017-03-07 | 206 | 56.5d |  |
| 215 |  | 新增地址相关接口 | 0.5d | 2017-03-03 | 2017-03-04 |  | 52d |  |
| 216 |  | 修改地址相关接口 | 0.5d | 2017-03-04 | 2017-03-04 | 215 | 52d |  |
| 217 |  | 删除地址相关接口 | 0.5d | 2017-03-04 | 2017-03-06 | 216 | 52d |  |
| 218 |  | 默认地址设置相关接口 | 0.5d | 2017-03-06 | 2017-03-06 | 217 | 52d |  |
| 219 |  | 地址与订单关联接口 | 0.5d | 2017-03-06 | 2017-03-07 | 218 | 52d |  |
| 220 | 4.2 | **站点设置** | 4d | 2017-03-09 | 2017-03-15 |  |  |  |
| 221 |  | 新增站点功能实现功能实现及测试 | 1.5d | 2017-03-09 | 2017-03-10 |  | 0d | start no earlier than 2017-03-09 |
| 222 |  | 站点列表维护功能实现及测试 | 2.5d | 2017-03-10 | 2017-03-15 | 221 | 0d |  |
| 223 | 4.3 | **行政地区设置** | 2d | 2017-03-15 | 2017-03-17 | 220 | 16d |  |
| 224 |  | 一级地区管理功能实现及测试 | 0.5d | 2017-03-15 | 2017-03-15 |  | 11.5d |  |
| 225 |  | 二级地区管理功能实现及测试 | 0.5d | 2017-03-15 | 2017-03-16 | 224 | 11.5d |  |
| 226 |  | 三级地区管理功能实现及测试 | 0.5d | 2017-03-16 | 2017-03-16 | 225 | 11.5d |  |
| 227 |  | 四级地区管理功能实现及测试 | 0.5d | 2017-03-16 | 2017-03-17 | 226 | 11.5d |  |
| 228 | 4.4 | **物流配送优化** | 6d | 2017-03-17 | 2017-03-24 | 223 | 16d |  |
| 229 |  | 配送模板管理功能实现及测试 | 3.5d | 2017-03-17 | 2017-03-21 |  | 11.5d |  |
| 230 |  | 区域配送管理功能实现及测试 | 2.5d | 2017-03-21 | 2017-03-24 | 229 | 11.5d |  |
| 231 | 4.5 | **文章分类** | 3d | 2017-03-24 | 2017-03-29 | 228 | 16d |  |
| 232 |  | 增加分类功能实现及测试 | 1.5d | 2017-03-24 | 2017-03-27 |  | 11.5d |  |
| 233 |  | 文章分类列表管理功能实现及测试 | 1.5d | 2017-03-27 | 2017-03-29 | 232 | 11.5d |  |
| 234 | 4.6 | **文章管理** | 5d | 2017-03-29 | 2017-04-04 | 231 | 16d |  |
| 235 |  | 新增文章功能实现及测试 | 2.5d | 2017-03-29 | 2017-03-31 |  | 11.5d |  |
| 236 |  | 文章列表管理功能实现及测试 | 2.5d | 2017-03-31 | 2017-04-04 | 235 | 11.5d |  |
| 237 | 4.7 | **广告管理** | 4.5d | 2017-04-04 | 2017-04-10 | 234 | 16d |  |
| 238 |  | 增加广告位功能实现及测试 | 2d | 2017-04-04 | 2017-04-06 |  | 11.5d |  |
| 239 |  | 广告位列表管理功能实现及测试 | 2.5d | 2017-04-06 | 2017-04-10 | 238 | 11.5d |  |
| 240 | 4.8 | **首页管理** | 5d | 2017-04-10 | 2017-04-15 | 237 | 16d |  |
| 241 |  | 增加栏目功能实现及测试 | 2d | 2017-04-10 | 2017-04-12 |  | 11.5d |  |
| 242 |  | 栏目列表维护功能实现及测试 | 3d | 2017-04-12 | 2017-04-15 | 241 | 11.5d |  |
| 243 | 4.9 | **导航管理** | 5d | 2017-04-15 | 2017-04-21 | 240 | 16d |  |
| 244 |  | 增加导航功能实现及测试 | 2d | 2017-04-15 | 2017-04-18 |  | 11.5d |  |
| 245 |  | 导航列表维护功能实现及测试 | 3d | 2017-04-18 | 2017-04-21 | 244 | 11.5d |  |
| 246 | 4.10 | **友情链接管理** | 4d | 2017-04-21 | 2017-04-27 | 243 | 16d |  |
| 247 |  | 增加友情链接功能实现及测试 | 2d | 2017-04-21 | 2017-04-25 |  | 11.5d |  |
| 248 |  | 友情链接列表维护功能实现及测试 | 2d | 2017-04-25 | 2017-04-27 | 247 | 11.5d |  |
| 249 | 4.11 | **商品评价** | 9.5d | 2016-12-26 | 2017-01-07 |  | 0d |  |
| 250 |  | 商品评价功能 | 3d | 2016-12-26 | 2016-12-29 |  | -9.5d | start no earlier than 2016-12-26 |
| 251 |  | 商品评价图片上传功能 | 2d | 2016-12-29 | 2017-01-03 | 250 | -9.5d |  |
| 252 |  | 评价审核 | 2.5d | 2017-01-03 | 2017-01-05 | 251 | -9.5d |  |
| 253 |  | 评价查询功能 | 2d | 2017-01-05 | 2017-01-07 | 252 | -9.5d |  |
| 254 | 4.12 | **订单管理** | 23d | 2017-01-07 | 2017-02-10 |  |  |  |
| 255 |  | 多状态订单查询 | 3d | 2017-01-07 | 2017-01-11 | 253 | -9.5d |  |
| 256 |  | 多状态订单统计 | 3d | 2017-01-11 | 2017-01-16 | 255 | -9.5d |  |
| 257 |  | 订单详情查看 | 3d | 2017-01-16 | 2017-01-19 | 256 | -9.5d |  |
| 258 |  | 订单取消\删除\收货功能 | 3d | 2017-01-19 | 2017-01-23 | 257 | -9.5d |  |
| 259 |  | 查看物流功能 | 2.5d | 2017-01-23 | 2017-01-26 | 258 | -9.5d |  |
| 260 |  | 订单回收站 | 2.5d | 2017-01-26 | 2017-02-04 | 259 | -9.5d |  |
| 261 |  | 订单活动加优惠券计算规则 | 5d | 2017-02-04 | 2017-02-10 | 259, 260 | -9.5d |  |
| 262 | 4.13 | **地址管理** | 4d | 2017-02-10 | 2017-02-16 | 261 | 0d |  |
| 263 |  | 新增地址 | 2d | 2017-02-10 | 2017-02-14 |  | 0d |  |
| 264 |  | 编辑、修改、删除地址 | 2d | 2017-02-14 | 2017-02-16 | 263 | 0d |  |
| 265 | 4.14 | **优惠券功能app和pc** | 23d | 2017-02-16 | 2017-03-17 | 262 | 0d |  |
| 266 |  | 创建多种类型优惠券 | 5d | 2017-02-16 | 2017-02-22 |  | 0d |  |
| 267 |  | 优惠券领券 | 4d | 2017-02-22 | 2017-02-28 | 266 | 0d |  |
| 268 |  | 优惠券使用功能 | 3d | 2017-02-28 | 2017-03-03 | 267 | 0d |  |
| 269 |  | 优惠券订单计算价格功能 | 5d | 2017-03-03 | 2017-03-09 | 268 | 0d |  |
| 270 |  | 满赠功能 | 6d | 2017-03-09 | 2017-03-17 | 269 | 0d |  |
| 271 | 4.15 | **供应商管理** | 4d | 2017-03-17 | 2017-03-22 | 265 | 0d |  |
| 272 |  | 供应商维护 | 2d | 2017-03-17 | 2017-03-20 |  | 0d |  |
| 273 |  | 供应商编辑、修改、删除功能 | 2d | 2017-03-20 | 2017-03-22 | 272 | 0d |  |
| 274 | 4.16 | **拆单功能app和pc** | 6d | 2017-03-22 | 2017-03-30 | 271 | 0d |  |
| 275 |  | 根据供应商进行拆单 | 3d | 2017-03-22 | 2017-03-27 |  | 0d |  |
| 276 |  | 优化订单功能 | 3d | 2017-03-27 | 2017-03-30 | 275 | 0d |  |
| 277 | 4.17 | **优化及其他功能** | 13d | 2017-03-30 | 2017-04-15 | 276 | 0d |  |
| 278 |  | 商品批量导入功能 | 3d | 2017-03-30 | 2017-04-03 |  | 0d |  |
| 279 |  | 订单号生成规则优化 | 5d | 2017-04-03 | 2017-04-10 | 278 | 0d |  |
| 280 |  | 秒杀功能优化解决爆库存问题 | 5d | 2017-04-10 | 2017-04-15 | 279 | 0d |  |

| ID | WBS | Task | Duration | Start | Finish | Predecessors | Total float | Constraint |
| --- | --- | --- | --- | --- | --- | --- | --- | --- |
| 281 | 4.18 | **钱包管理** | 25d | 2017-04-15 | 2017-05-17 | 280 | 0d |  |
| 282 |  | 收支明细 | 3d | 2017-04-15 | 2017-04-19 |  | 0d |  |
| 283 |  | 充值明细 | 3d | 2017-04-19 | 2017-04-24 | 282 | 0d |  |
| 284 |  | 充值功能 | 4d | 2017-04-24 | 2017-04-28 | 283 | 0d |  |
| 285 |  | 短信验证支付功能 | 4d | 2017-04-15 | 2017-04-20 |  | 3d | start no earlier than 2017-04-08 |
| 286 |  | 银行卡绑定 | 4d | 2017-04-20 | 2017-04-26 | 285 | 12d |  |
| 287 |  | 支付密码设置及找回功能 | 5d | 2017-04-26 | 2017-05-02 | 286 | 12d |  |
| 288 |  | 钱包支付 | 5d | 2017-04-28 | 2017-05-04 | 284 | 0d |  |
| 289 |  | 提现功能 | 5d | 2017-05-04 | 2017-05-11 | 288 | 5d |  |
| 290 |  | 快捷支付功能相关实现 | 8d | 2017-04-20 | 2017-05-01 | 285 | 3d |  |
| 291 |  | 钱包资金安全相关设置 | 10d | 2017-05-04 | 2017-05-17 | 288, 290 | 0d |  |
| 292 | 4.19 | **会员等级设置** | 8.5d | 2017-02-10 | 2017-02-21 |  |  |  |
| 293 |  | 会员等级设置 | 1.5d | 2017-02-08 | 2017-02-09 |  | 1796.5d | start no earlier than 2017-02-08 |
| 294 |  | 会员积分赠送规则 | 2d | 2017-02-10 | 2017-02-14 | 293 | 1.5d |  |
| 295 |  | 会员积分清零设置 | 2d | 2017-02-14 | 2017-02-16 | 294 | 1.5d |  |
| 296 |  | 会员等级优惠设置 | 3d | 2017-02-16 | 2017-02-20 | 293, 295 | 1.5d |  |
| 297 | 4.20 | **乐币设置** | 16d | 2017-02-21 | 2017-03-14 | 292 | 15d |  |
| 298 |  | 乐币设置 | 2d | 2017-02-21 | 2017-02-23 |  | 10.5d |  |
| 299 |  | 乐币消费规则 | 3d | 2017-02-23 | 2017-02-28 | 298 | 10.5d |  |
| 300 |  | 乐币抵扣规则 | 4d | 2017-02-28 | 2017-03-04 | 299 | 10.5d |  |
| 301 |  | 取消订单乐币退还规则 | 3d | 2017-03-04 | 2017-03-08 | 300 | 10.5d |  |
| 302 |  | 乐币赠送相关接口 | 4d | 2017-03-08 | 2017-03-14 | 301 | 10.5d |  |
| 303 | 4.21 | **用户登录信息** | 10d | 2017-03-14 | 2017-03-27 | 297 | 15d |  |
| 304 |  | 用户登录个人资料信息 | 2d | 2017-03-14 | 2017-03-16 |  | 10.5d |  |
| 305 |  | 用户上传个人图片信息 | 1.5d | 2017-03-16 | 2017-03-18 | 304 | 10.5d |  |
| 306 |  | 用户积分成长情况展示 | 2d | 2017-03-18 | 2017-03-21 | 305 | 10.5d |  |
| 307 |  | 用户乐币使用情况详情 | 2.5d | 2017-03-21 | 2017-03-23 | 306 | 10.5d |  |
| 308 |  | 用户代办事项 | 2d | 2017-03-23 | 2017-03-27 | 307 | 10.5d |  |
| 309 | 4.22 | **待办事项** | 4.5d | 2017-03-27 | 2017-04-01 | 303 | 15d |  |
| 310 |  | 后台待办事项资料展示 | 2d | 2017-03-27 | 2017-03-29 |  | 10.5d |  |
| 311 |  | 待办事项业务处理 | 2.5d | 2017-03-29 | 2017-04-01 | 310 | 10.5d |  |
| 312 | 4.23 | **统计数据** | 7d | 2017-04-01 | 2017-04-11 | 309 | 15d |  |
| 313 |  | 统计数据展示 | 2.5d | 2017-04-01 | 2017-04-04 |  | 10.5d |  |
| 314 |  | 数据分析展示面板 | 2.5d | 2017-04-04 | 2017-04-07 | 313 | 10.5d |  |
| 315 |  | 统计数据导出功能 | 2d | 2017-04-07 | 2017-04-11 | 314 | 10.5d |  |
| 316 |  | 关键字搜索、组合搜索 | 4d | 2017-04-11 | 2017-04-15 | 315, 312 | 10.5d |  |
| 317 | 4.25 | **商品支持及售后** | 10.5d | 2017-04-15 | 2017-04-28 | 316 | 15d |  |
| 318 |  | 售后信息资料录入 | 1d | 2017-04-15 | 2017-04-17 |  | 10.5d |  |
| 319 |  | 售后信息资料及图片上传 | 1d | 2017-04-17 | 2017-04-18 | 318 | 10.5d |  |
| 320 |  | 售后信息前台展示相关接口 | 1.5d | 2017-04-18 | 2017-04-19 | 319 | 10.5d |  |
| 321 |  | 申请单查询 | 1d | 2017-04-19 | 2017-04-20 | 320 | 10.5d |  |
| 322 |  | 售后单申请 | 2d | 2017-04-20 | 2017-04-24 | 321 | 10.5d |  |
| 323 |  | 售后进度 | 2d | 2017-04-24 | 2017-04-26 | 322 | 10.5d |  |
| 324 |  | 物流功能 | 2d | 2017-04-26 | 2017-04-28 | 323 | 10.5d |  |

## Version 2 (saved 2016-12-30)

Note of the change: Squashed commit of the following:

Last finish stays 2017-05-17.

Changed:

| ID | Task | Start | Finish | Duration | Total float |
| --- | --- | --- | --- | --- | --- |
| 1 | **安卓，ios接口改造** |  | 2017-02-02 → 2017-02-03 (+1d) | 22d → 22d? |  |
| 2 | 安卓，ios接口改造 |  | 2017-02-02 → 2017-02-03 (+1d) | 22d → 22d? |  |
| 3 | **安卓，ios接口改造** |  | 2017-02-02 → 2017-02-03 (+1d) | 22d → 22d? |  |
| 4 | **登陆注册相关接口** |  |  | 4d → 4d? | 3.88d → none |
| 5 | 登陆接口重写及测试 |  |  | 1d → 1d? | 3.88d → 0d |
| 6 | 注册接口重写及测试 |  |  | 1d → 1d? | 3.88d → 0d |
| 7 | 忘记密码接口重写及测试 |  |  | 1d → 1d? | 3.88d → 0d |
| 8 | 发送短信及验证码相关接口 |  |  | 1d → 1d? | 3.88d → 0d |
| 9 | **app首页接口** |  |  | 5d → 5d? | 3.88d → none |
| 10 | 首页轮播图接口重写及测试 |  |  | 1d → 1d? | 5.88d → 2d |
| 11 | 新品抢先接口重写及测试 |  |  | 1d → 1d? | 5.88d → 2d |
| 12 | 省钱趴接口重写及测试 |  |  | 1d → 1d? | 5.88d → 2d |
| 13 | 每日上线接口重写及测试 |  |  | 1d → 1d? | 3.88d → 0d |
| 14 | 超实惠接口重写及测试 |  |  | 1d → 1d? | 3.88d → 0d |
| 15 | 大牌秀接口重写及测试 |  |  | 1d → 1d? | 3.88d → 0d |
| 16 | 特色好货接口重写及测试 |  |  | 1d → 1d? | 3.88d → 0d |
| 17 | 为你推荐接口重写及测试 |  |  | 1d → 1d? | 3.88d → 0d |
| 18 | **专题活动页面接口** |  |  | 4d → 4d? | 3.88d → none |
| 19 | 活动页面商品展示接口重写及测试 |  | 2017-01-13 → 2017-01-12 (-1d) | 2d → 1d? | 3.88d → 1d |
| 20 | 秒杀与限时抢活动相关接口 | 2017-01-13 → 2017-01-12 (-1d) | 2017-01-16 → 2017-01-13 (-3d) | 1d → 1d? | 3.88d → 1d |
| 21 | 活动页面按字段排序接口重写及测试 | 2017-01-16 → 2017-01-13 (-3d) | 2017-01-17 → 2017-01-16 (-1d) | 1d → 1d? | 3.88d → 1d |
| 22 | **分类接口** |  |  | 2d → 2d? | 3.88d → none |
| 23 | 分类展示接口 |  |  | 1d → 1d? | 3.88d → 0d |
| 24 | 跨境专区分类特别展示接口 |  |  | 1d → 1d? | 3.88d → 0d |
| 25 | **搜索接口** |  |  | 3d → 3d? | 3.88d → none |
| 26 | 首页搜索查询接口 |  |  | 1d → 1d? | 3.88d → 1d |
| 27 | 类目下搜索查询接口 |  | 2017-01-23 → 2017-01-21 (-2d) | 2d → 1d? | 3.88d → 1d |
| 28 | **商品列表页相关接口** |  |  | 7d → 7d? |  |
| 29 | 商品列表展示及分页接口 |  |  | 1d → 1d? | -3.12d → -4d |
| 30 | 商品详情页相关接口 |  |  | 1d → 1d? | -3.12d → -4d |
| 31 | 商品基础信息相关接口 |  |  | 1d → 1d? | -3.12d → -4d |
| 32 | 商品参数选择及库存数量相关接口 |  |  | 1d → 1d? | -3.12d → -4d |
| 33 | 商品参与活动及优惠金额相关接口 |  |  | 1d → 1d? | -3.12d → -4d |
| 34 | 商品主副图片轮播展示相关接口 |  | 2017-01-12 → 2017-01-13 (+1d) | 0.5d → 1d? | -3.12d → -4d |
| 35 | 商品详细介绍相关接口 | 2017-01-12 → 2017-01-13 (+1d) | 2017-01-13 → 2017-01-16 (+3d) | 0.5d → 1d? | -3.12d → -4d |
| 36 | 商品跳转至订单结算相关接口 | 2017-01-13 → 2017-01-16 (+3d) | 2017-01-13 → 2017-01-17 (+4d) | 0.5d → 1d? | -3.12d → -4d |
| 37 | 商品售后信息相关接口 | 2017-01-13 → 2017-01-17 (+4d) | 2017-01-16 → 2017-01-18 (+2d) | 0.5d → 1d? | -3.12d → -4d |
| 38 | **购物车相关接口** |  |  | 3d → 3d? | -3.12d → none |
| 39 | 购物车权限控制 |  |  | 1d → 1d? | -3.12d → -2d |
| 40 | 购物车加入功能 |  | 2017-01-17 → 2017-01-18 (+1d) | 0.5d → 1d? | -3.12d → -2d |
| 41 | 购物车编辑相关功能 | 2017-01-17 → 2017-01-18 (+1d) | 2017-01-18 → 2017-01-19 (+1d) | 0.5d → 1d? | -3.12d → -2d |
| 42 | 购物车下推荐商品相关接口 | 2017-01-18 → 2017-01-19 (+1d) | 2017-01-18 → 2017-01-20 (+2d) | 0.5d → 1d? | -3.12d → -2d |
| 43 | 购物车跳转至订单页相关接口 | 2017-01-18 → 2017-01-20 (+2d) | 2017-01-19 → 2017-01-21 (+2d) | 0.5d → 1d? | -3.12d → -2d |
| 44 | **订单相关接口** |  |  | 7.5d → 7.5d? | -3.12d → none |
| 45 | 订单结算页相关接口 |  |  | 1d → 1d? | -3.12d → 0.5d |
| 46 | 查看订单相关接口 |  |  | 1d → 1d? | -3.12d → 0.5d |
| 47 | 订单查询物流相关接口 |  |  | 1d → 1d? | -3.12d → 0.5d |
| 48 | 支付订单接口 |  | 2017-01-25 → 2017-01-24 (-1d) | 2d → 1d? | -3.12d → 0.5d |
| 49 | 订单退换货相关接口 | 2017-01-25 → 2017-01-24 (-1d) | 2017-01-26 → 2017-01-25 (-1d) | 1.5d → 1d? | -3.12d → 0.5d |
| 50 | 订单确认相关接口 | 2017-01-26 → 2017-01-25 (-1d) | 2017-02-03 → 2017-01-26 (-8d) | 0.5d → 1d? | -3.12d → 0.5d |
| 51 | 确认收货相关接口 | 2017-02-03 → 2017-01-26 (-8d) |  | 0.5d → 1d? | -3.12d → 0.5d |
| 52 | **地址管理相关接口** |  |  | 2.5d → 2.5d? | -3.12d → none |
| 53 | 新增地址相关接口 |  |  | 0.5d → 1d? | -3.12d → -2.5d |
| 54 | 修改地址相关接口 |  | 2017-02-04 → 2017-02-06 (+2d) | 0.5d → 1d? | -3.12d → -2.5d |
| 55 | 删除地址相关接口 | 2017-02-04 → 2017-02-06 (+2d) | 2017-02-06 → 2017-02-07 (+1d) | 0.5d → 1d? | -3.12d → -2.5d |
| 56 | 默认地址设置相关接口 | 2017-02-06 → 2017-02-07 (+1d) | 2017-02-06 → 2017-02-08 (+2d) | 0.5d → 1d? | -3.12d → -2.5d |
| 57 | 地址与订单关联接口 | 2017-02-06 → 2017-02-08 (+2d) | 2017-02-07 → 2017-02-09 (+2d) | 0.5d → 1d? | -3.12d → -2.5d |
| 58 | **他她乐PC端网站** |  |  | 86.5d → 86.5d? | 0d → none |
| 59 | **前端框架搭建** |  |  | 16d → 16d? |  |
| 60 | angularJs搭建 |  | 2017-01-03 → 2016-12-30 (-4d) | 2d → 1d? | 0d → 9d |
| 61 | 浏览器兼容性处理 | 2017-01-03 → 2016-12-30 (-4d) | 2017-01-06 → 2017-01-03 (-3d) | 3d → 1d? | 0d → 9d |
| 62 | 分辨率兼容性处理 | 2017-01-06 → 2017-01-03 (-3d) | 2017-01-10 → 2017-01-04 (-6d) | 3d → 1d? | 0d → 9d |
| 63 | 模块化公共组件搭建 | 2017-01-10 → 2017-01-04 (-6d) | 2017-01-12 → 2017-01-05 (-7d) | 2d → 1d? | 0d → 9d |
| 64 | 数据渲染框架选型 | 2017-01-12 → 2017-01-05 (-7d) | 2017-01-16 → 2017-01-06 (-10d) | 2d → 1d? | 0d → 9d |
| 65 | 模块化及路由设置封装 | 2017-01-16 → 2017-01-06 (-10d) | 2017-01-18 → 2017-01-07 (-11d) | 2d → 1d? | 0d → 9d |
| 66 | 统一面向AOP过滤处理 | 2017-01-18 → 2017-01-07 (-11d) | 2017-01-20 → 2017-01-09 (-11d) | 2d → 1d? | 0d → 9d |
| 67 | **首页** |  |  | 6d → 6d? | 17d → none |
| 68 | TOP项部功能 |  |  | 1.5d → 1d? | 12.5d → 1d |
| 69 | 首页BANNER图展示 |  |  | 1d → 1d? | 12.5d → 1d |
| 70 | 导航 |  |  | 1d → 1d? | 12.5d → 1d |

| ID | Task | Start | Finish | Duration | Total float |
| --- | --- | --- | --- | --- | --- |
| 71 | 商品分类分层导航展示 |  |  | 1d → 1d? | 12.5d → 1d |
| 72 | 尾部功能 |  | 2017-02-03 → 2017-01-26 (-8d) | 1.5d → 1d? | 12.5d → 1d |
| 73 | **商品及活动分类页** |  |  | 4d → 4d? | 17d → none |
| 74 | 居家生活、个护美妆、母婴用品、家电数码、今日限时购（秒杀） |  | 2017-02-06 → 2017-02-04 (-2d) | 2d → 1d? | 12.5d → 2d |
| 75 | 每日上新、省钱趴、团购 、其它二级分类页 | 2017-02-06 → 2017-02-04 (-2d) | 2017-02-08 → 2017-02-06 (-2d) | 2d → 1d? | 12.5d → 2d |
| 76 | **商品详情展示与购买** |  |  | 12d → 12d? | 17d → none |
| 77 | 商品主标题、商品副标题展示、商品促销信息展示 |  | 2017-02-10 → 2017-02-09 (-1d) | 2d → 1d? | 12.5d → 6d |
| 78 | 商品服务支持展示、商品参数信息 | 2017-02-10 → 2017-02-09 (-1d) | 2017-02-14 → 2017-02-10 (-4d) | 2d → 1d? | 12.5d → 6d |
| 79 | 商品购买、加入购物车、商品收藏、同类型商品推荐 | 2017-02-14 → 2017-02-10 (-4d) | 2017-02-16 → 2017-02-13 (-3d) | 2d → 1d? | 12.5d → 6d |
| 80 | 所属店铺信息展示 （店铺名称，联系客服、进入店铺） | 2017-02-16 → 2017-02-13 (-3d) | 2017-02-18 → 2017-02-14 (-4d) | 2d → 1d? | 12.5d → 6d |
| 81 | 商品评价展示 | 2017-02-18 → 2017-02-14 (-4d) | 2017-02-21 → 2017-02-15 (-6d) | 2d → 1d? | 12.5d → 6d |
| 82 | 商品详情、商品参数规格、售后服务信息 | 2017-02-21 → 2017-02-15 (-6d) | 2017-02-23 → 2017-02-16 (-7d) | 2d → 1d? | 12.5d → 6d |
| 83 | **支付** |  |  | 7d → 7d? | 17d → none |
| 84 | 银联支付 |  | 2017-02-27 → 2017-02-24 (-3d) | 2d → 1d? | 12.5d → 4d |
| 85 | 支付宝支付 （扫码支付） | 2017-02-27 → 2017-02-24 (-3d) | 2017-03-01 → 2017-02-27 (-2d) | 2.5d → 1d? | 12.5d → 4d |
| 86 | 微信支付 （扫码支付） | 2017-03-01 → 2017-02-27 (-2d) | 2017-03-04 → 2017-02-28 (-4d) | 2.5d → 1d? | 12.5d → 4d |
| 87 | **个人中心** |  |  | 13.5d → 13.5d? | 17d → none |
| 88 | 我的个人信息管理（头像、昵称、生日等） |  | 2017-03-07 → 2017-03-06 (-1d) | 2.5d → 1d? | 12.5d → 6.5d |
| 89 | 会员等级 （会员等级，成长值） | 2017-03-07 → 2017-03-06 (-1d) | 2017-03-09 → 2017-03-07 (-2d) | 2d → 1d? | 12.5d → 6.5d |
| 90 | 我的收藏 | 2017-03-09 → 2017-03-07 (-2d) | 2017-03-13 → 2017-03-08 (-5d) | 1.5d → 1d? | 12.5d → 6.5d |
| 91 | 收货地址 | 2017-03-13 → 2017-03-08 (-5d) | 2017-03-14 → 2017-03-09 (-5d) | 1.5d → 1d? | 12.5d → 6.5d |
| 92 | 订单中心 | 2017-03-14 → 2017-03-09 (-5d) | 2017-03-16 → 2017-03-10 (-6d) | 1.5d → 1d? | 12.5d → 6.5d |
| 93 | 账户中心（账户余额，优惠劵，乐币） | 2017-03-16 → 2017-03-10 (-6d) | 2017-03-18 → 2017-03-13 (-5d) | 2.5d → 1d? | 12.5d → 6.5d |
| 94 | 安全设置 (登录密码管理、支付密码、电话号码验证、邮箱验证等) | 2017-03-18 → 2017-03-13 (-5d) | 2017-03-21 → 2017-03-14 (-7d) | 2d → 1d? | 12.5d → 6.5d |
| 95 | 帮助中心 |  | 2017-03-23 → 2017-03-22 (-1d) | 2d → 1d? | 12.5d → 4.5d |
| 96 | **优惠券** |  |  | 7.5d → 7.5d? | 17d → none |
| 97 | 优惠劵种类管理 |  | 2017-03-27 → 2017-03-24 (-3d) | 2d → 1d? | 12.5d → 3.5d |
| 98 | 优惠劵管理（添加，编辑，查询，删除） | 2017-03-27 → 2017-03-24 (-3d) | 2017-03-29 → 2017-03-27 (-2d) | 2d → 1d? | 12.5d → 3.5d |
| 99 | 优惠劵配置与发放管理（配置、审核、发放） | 2017-03-29 → 2017-03-27 (-2d) | 2017-04-01 → 2017-03-28 (-4d) | 2.5d → 1d? | 12.5d → 3.5d |
| 100 | 店铺优惠劵的查看与管理 | 2017-04-01 → 2017-03-28 (-4d) | 2017-04-03 → 2017-03-29 (-5d) | 1d → 1d? | 12.5d → 3.5d |
| 101 | **系统管理** |  |  | 3.5d → 3.5d? | 17d → none |
| 102 | 站点设置 |  |  | 1d → 1d? | 12.5d → 0.5d |
| 103 | 行政地区设置 |  |  | 1d → 1d? | 12.5d → 0.5d |
| 104 | 物流配送优化 |  |  | 1.5d → 1d? | 12.5d → 0.5d |
| 105 | **商品评论管理** |  |  | 8d → 8d? | 17d → none |
| 106 | 评论规则设置 |  | 2017-04-10 → 2017-04-07 (-3d) | 2d → 1d? | 12.5d → 4d |
| 107 | 商品评论查看 | 2017-04-10 → 2017-04-07 (-3d) | 2017-04-11 → 2017-04-10 (-1d) | 1d → 1d? | 12.5d → 4d |
| 108 | 商品评论管理（屏蔽） | 2017-04-11 → 2017-04-10 (-1d) | 2017-04-14 → 2017-04-11 (-3d) | 3d → 1d? | 12.5d → 4d |
| 109 | 打分规则设置 | 2017-04-14 → 2017-04-11 (-3d) | 2017-04-17 → 2017-04-12 (-5d) | 2d → 1d? | 12.5d → 4d |
| 110 | **主面板信息优化** |  |  | 7d → 7d? | 17d → none |
| 111 | 用户登录信息 |  | 2017-04-19 → 2017-04-18 (-1d) | 1.5d → 1d? | 12.5d → 3d |
| 112 | 待办事项 | 2017-04-19 → 2017-04-18 (-1d) | 2017-04-20 → 2017-04-19 (-1d) | 1.5d → 1d? | 12.5d → 3d |
| 113 | 统计数据展示 | 2017-04-20 → 2017-04-19 (-1d) | 2017-04-24 → 2017-04-20 (-4d) | 2d → 1d? | 12.5d → 3d |
| 114 | 数据分析展示面板 | 2017-04-24 → 2017-04-20 (-4d) | 2017-04-26 → 2017-04-21 (-5d) | 2d → 1d? | 12.5d → 3d |
| 115 | **搜索** |  |  | 9d → 9d? |  |
| 116 | 首页搜索框（模糊搜索） |  | 2017-01-04 → 2017-01-03 (-1d) | 2d → 1d? | 0d → 5d |
| 117 | 关键字搜索、组合搜索 | 2017-01-04 → 2017-01-03 (-1d) | 2017-01-09 → 2017-01-04 (-5d) | 4d → 1d? | 0d → 5d |
| 118 | 搜索结果页面 | 2017-01-09 → 2017-01-04 (-5d) | 2017-01-11 → 2017-01-05 (-6d) | 2d → 1d? | 0d → 5d |
| 119 | **蜂享购对接 （加入投资兑换）** |  |  | 5d → 5d? | 16.5d → none |
| 120 | 商品详情页 0元购 |  | 2017-01-13 → 2017-01-12 (-1d) | 2.5d → 1d? | 12d → 3d |
| 121 | 0元购详情页 | 2017-01-13 → 2017-01-12 (-1d) | 2017-01-18 → 2017-01-13 (-5d) | 2.5d → 1d? | 12d → 3d |
| 122 | **订单** |  |  | 13d → 13d? | 16.5d → none |
| 123 | 我的订单 |  | 2017-01-21 → 2017-01-19 (-2d) | 3d → 1d? | 12d → 7d |
| 124 | 订单支付 | 2017-01-21 → 2017-01-19 (-2d) | 2017-01-24 → 2017-01-20 (-4d) | 2d → 1d? | 12d → 7d |
| 125 | 订单评价（商品、店铺打分和文字评价） | 2017-01-24 → 2017-01-20 (-4d) | 2017-01-26 → 2017-01-21 (-5d) | 2.5d → 1d? | 12d → 7d |
| 126 | 退款、退换货 | 2017-01-26 → 2017-01-21 (-5d) | 2017-02-06 → 2017-01-23 (-14d) | 2.5d → 1d? | 12d → 7d |
| 127 | 订单回收站 | 2017-02-06 → 2017-01-23 (-14d) | 2017-02-07 → 2017-01-24 (-14d) | 1d → 1d? | 12d → 7d |
| 128 | 订单物流跟踪 | 2017-02-07 → 2017-01-24 (-14d) | 2017-02-09 → 2017-01-25 (-15d) | 2d → 1d? | 12d → 7d |
| 129 | **购物车** |  |  | 5d → 5d? | 16.5d → none |
| 130 | 购物车 |  | 2017-02-14 → 2017-02-10 (-4d) | 3.5d → 1d? | 12d → 3d |
| 131 | 购物车下拉的猜你喜欢商品列表 | 2017-02-14 → 2017-02-10 (-4d) | 2017-02-16 → 2017-02-13 (-3d) | 1.5d → 1d? | 12d → 3d |
| 132 | **登录与注册** |  |  | 4d → 4d? | 16.5d → none |
| 133 | 登录 |  |  | 1d → 1d? | 12d → 1d |
| 134 | 注册 |  |  | 1d → 1d? | 12d → 1d |
| 135 | 忘记密码 |  | 2017-02-21 → 2017-02-20 (-1d) | 2d → 1d? | 12d → 1d |
| 136 | **店铺** |  |  | 10d → 10d? | 16.5d → none |
| 137 | 店铺展示 |  | 2017-02-24 → 2017-02-22 (-2d) | 3d → 1d? | 12d → 6d |
| 138 | 店铺客服 | 2017-02-24 → 2017-02-22 (-2d) | 2017-02-28 → 2017-02-23 (-5d) | 2.5d → 1d? | 12d → 6d |
| 139 | 店铺收藏 | 2017-02-28 → 2017-02-23 (-5d) | 2017-03-02 → 2017-02-24 (-6d) | 2d → 1d? | 12d → 6d |
| 140 | 店铺详情 | 2017-03-02 → 2017-02-24 (-6d) | 2017-03-06 → 2017-02-27 (-7d) | 2.5d → 1d? | 12d → 6d |

| ID | Task | Start | Finish | Duration | Total float |
| --- | --- | --- | --- | --- | --- |
| 141 | **促销&活动** |  |  | 16d → 16d? | 16.5d → none |
| 142 | 省钱趴 |  | 2017-03-09 → 2017-03-07 (-2d) | 3d → 1d? | 12d → 11d |
| 143 | 限时购（秒杀） | 2017-03-09 → 2017-03-07 (-2d) | 2017-03-14 → 2017-03-08 (-6d) | 3d → 1d? | 12d → 11d |
| 144 | 满减 （每满XX减XX） | 2017-03-14 → 2017-03-08 (-6d) | 2017-03-17 → 2017-03-09 (-8d) | 3d → 1d? | 12d → 11d |
| 145 | 满赠 （结合优惠券） | 2017-03-17 → 2017-03-09 (-8d) | 2017-03-21 → 2017-03-10 (-11d) | 3d → 1d? | 12d → 11d |
| 146 | 团购 | 2017-03-21 → 2017-03-10 (-11d) | 2017-03-27 → 2017-03-13 (-14d) | 4d → 1d? | 12d → 11d |
| 147 | **后台管理** |  |  | 25d → 25d? | 16.5d → none |
| 148 | **促销&活动管理优化** |  |  | 9d → 9d? | 16.5d → none |
| 149 | 活动管理方式界面优化 |  | 2017-03-29 → 2017-03-28 (-1d) | 2d → 1d? | 12d → 5d |
| 150 | 满减（每满XX减XX）配置 | 2017-03-29 → 2017-03-28 (-1d) | 2017-03-31 → 2017-03-29 (-2d) | 2d → 1d? | 12d → 5d |
| 151 | 满赠配置（结合优惠券） | 2017-03-31 → 2017-03-29 (-2d) | 2017-04-03 → 2017-03-30 (-4d) | 2.5d → 1d? | 12d → 5d |
| 152 | 团购配置 | 2017-04-03 → 2017-03-30 (-4d) | 2017-04-06 → 2017-03-31 (-6d) | 2.5d → 1d? | 12d → 5d |
| 153 | **网站管理** |  |  | 9.5d → 9.5d? | 16.5d → none |
| 154 | 文章分类 |  |  | 1.5d → 1d? | 12d → 3.5d |
| 155 | 文章管理 |  | 2017-04-11 → 2017-04-10 (-1d) | 2d → 1d? | 12d → 3.5d |
| 156 | 广告管理 | 2017-04-11 → 2017-04-10 (-1d) | 2017-04-13 → 2017-04-11 (-2d) | 1.5d → 1d? | 12d → 3.5d |
| 157 | 首页管理 | 2017-04-13 → 2017-04-11 (-2d) | 2017-04-14 → 2017-04-12 (-2d) | 1.5d → 1d? | 12d → 3.5d |
| 158 | 导航管理 | 2017-04-14 → 2017-04-12 (-2d) | 2017-04-17 → 2017-04-13 (-4d) | 1.5d → 1d? | 12d → 3.5d |
| 159 | 友情链接管理 | 2017-04-17 → 2017-04-13 (-4d) | 2017-04-18 → 2017-04-14 (-4d) | 1.5d → 1d? | 12d → 3.5d |
| 160 | **会员系统** |  |  | 6.5d → 6.5d? | 16.5d → none |
| 161 | 会员等级设置 |  | 2017-04-20 → 2017-04-19 (-1d) | 2d → 1d? | 12d → 3.5d |
| 162 | 会员成长值规则设置 | 2017-04-20 → 2017-04-19 (-1d) | 2017-04-25 → 2017-04-20 (-5d) | 2.5d → 1d? | 12d → 3.5d |
| 163 | 乐币设置 | 2017-04-25 → 2017-04-20 (-5d) | 2017-04-27 → 2017-04-21 (-6d) | 2d → 1d? | 12d → 3.5d |
| 164 | **他她乐PC端接口** |  |  | 106.5d → 106.5d? | 0d → none |
| 165 | **重新编写2.0前台所有接口（PC）** |  |  | 23d → 23d? | 2d → none |
| 166 | **登陆注册相关接口** |  |  | 5d → 5d? | 51d → none |
| 167 | 登陆接口重写及测试 |  |  | 1d → 1d? | 51d → 1d |
| 168 | 注册接口重写及测试 |  |  | 1d → 1d? | 51d → 1d |
| 169 | 忘记密码接口重写及测试 |  |  | 1d → 1d? | 51d → 1d |
| 170 | 发送短信及验证码相关接口 |  | 2017-02-14 → 2017-02-13 (-1d) | 2d → 1d? | 51d → 1d |
| 171 | **app首页接口** |  |  | 8d → 8d? | 55.5d → none |
| 172 | 首页轮播图接口重写及测试 |  |  | 1d → 1d? | 51d → 0d |
| 173 | 新品抢先接口重写及测试 |  |  | 1d → 1d? | 51d → 0d |
| 174 | 省钱趴接口重写及测试 |  |  | 1d → 1d? | 51d → 0d |
| 175 | 每日上线接口重写及测试 |  |  | 1d → 1d? | 51d → 0d |
| 176 | 超实惠接口重写及测试 |  |  | 1d → 1d? | 51d → 0d |
| 177 | 大牌秀接口重写及测试 |  |  | 1d → 1d? | 51d → 0d |
| 178 | 特色好货接口重写及测试 |  |  | 1d → 1d? | 51d → 0d |
| 179 | 为你推荐接口重写及测试 |  |  | 1d → 1d? | 51d → 0d |
| 180 | **专题活动页面接口** |  |  | 5d → 5d? | 55.5d → none |
| 181 | 活动页面商品展示接口重写及测试 |  | 2017-02-27 → 2017-02-24 (-3d) | 2d → 1d? | 51d → 2d |
| 182 | 秒杀与限时抢活动相关接口 | 2017-02-27 → 2017-02-24 (-3d) | 2017-03-01 → 2017-02-27 (-2d) | 2d → 1d? | 51d → 2d |
| 183 | 活动页面按字段排序接口重写及测试 | 2017-03-01 → 2017-02-27 (-2d) | 2017-03-02 → 2017-02-28 (-2d) | 1d → 1d? | 51d → 2d |
| 184 | **分类接口** |  |  | 3d → 3d? | 55.5d → none |
| 185 | 分类展示接口 |  | 2017-03-04 → 2017-03-03 (-1d) | 2d → 1d? | 51d → 1d |
| 186 | 跨境专区分类特别展示接口 | 2017-03-04 → 2017-03-03 (-1d) | 2017-03-06 → 2017-03-04 (-2d) | 1d → 1d? | 51d → 1d |
| 187 | **搜索接口** |  |  | 2d → 2d? | 55.5d → none |
| 188 | 首页搜索查询接口 |  |  | 1d → 1d? | 51d → 0d |
| 189 | 类目下搜索查询接口 |  |  | 1d → 1d? | 51d → 0d |
| 190 | **商品列表页相关接口** |  |  | 7d → 7d? |  |
| 191 | 商品列表展示及分页接口 |  |  | 1d → 1d? | 0d → -4d |
| 192 | 商品详情页相关接口 |  |  | 1d → 1d? | 0d → -4d |
| 193 | 商品基础信息相关接口 |  |  | 1d → 1d? | 0d → -4d |
| 194 | 商品参数选择及库存数量相关接口 |  |  | 1d → 1d? | 0d → -4d |
| 195 | 商品参与活动及优惠金额相关接口 |  |  | 1d → 1d? | 0d → -4d |
| 196 | 商品主副图片轮播展示相关接口 |  | 2017-02-16 → 2017-02-17 (+1d) | 0.5d → 1d? | 0d → -4d |
| 197 | 商品详细介绍相关接口 | 2017-02-16 → 2017-02-17 (+1d) | 2017-02-17 → 2017-02-18 (+1d) | 0.5d → 1d? | 0d → -4d |
| 198 | 商品跳转至订单结算相关接口 | 2017-02-17 → 2017-02-18 (+1d) | 2017-02-17 → 2017-02-20 (+3d) | 0.5d → 1d? | 0d → -4d |
| 199 | 商品售后信息相关接口 | 2017-02-17 → 2017-02-20 (+3d) | 2017-02-18 → 2017-02-21 (+3d) | 0.5d → 1d? | 0d → -4d |
| 200 | **购物车相关接口** |  |  | 3d → 3d? | 56.5d → none |
| 201 | 购物车权限控制 |  |  | 1d → 1d? | 52d → -2d |
| 202 | 购物车加入功能 |  | 2017-02-20 → 2017-02-21 (+1d) | 0.5d → 1d? | 52d → -2d |
| 203 | 购物车编辑相关功能 | 2017-02-20 → 2017-02-21 (+1d) | 2017-02-21 → 2017-02-22 (+1d) | 0.5d → 1d? | 52d → -2d |
| 204 | 购物车下推荐商品相关接口 | 2017-02-21 → 2017-02-22 (+1d) | 2017-02-21 → 2017-02-23 (+2d) | 0.5d → 1d? | 52d → -2d |
| 205 | 购物车跳转至订单页相关接口 | 2017-02-21 → 2017-02-23 (+2d) | 2017-02-22 → 2017-02-24 (+2d) | 0.5d → 1d? | 52d → -2d |
| 206 | **订单相关接口** |  |  | 7.5d → 7.5d? | 56.5d → none |
| 207 | 订单结算页相关接口 |  |  | 1d → 1d? | 52d → 0.5d |
| 208 | 查看订单相关接口 |  |  | 1d → 1d? | 52d → 0.5d |
| 209 | 订单查询物流相关接口 |  |  | 1d → 1d? | 52d → 0.5d |
| 210 | 支付订单接口 |  | 2017-03-01 → 2017-02-28 (-1d) | 2d → 1d? | 52d → 0.5d |

| ID | Task | Start | Finish | Duration | Total float |
| --- | --- | --- | --- | --- | --- |
| 211 | 订单退换货相关接口 | 2017-03-01 → 2017-02-28 (-1d) | 2017-03-02 → 2017-03-01 (-1d) | 1.5d → 1d? | 52d → 0.5d |
| 212 | 订单确认相关接口 | 2017-03-02 → 2017-03-01 (-1d) | 2017-03-03 → 2017-03-02 (-1d) | 0.5d → 1d? | 52d → 0.5d |
| 213 | 确认收货相关接口 | 2017-03-03 → 2017-03-02 (-1d) |  | 0.5d → 1d? | 52d → 0.5d |
| 214 | **地址管理相关接口** |  |  | 2.5d → 2.5d? | 56.5d → none |
| 215 | 新增地址相关接口 |  |  | 0.5d → 1d? | 52d → -2.5d |
| 216 | 修改地址相关接口 |  | 2017-03-04 → 2017-03-06 (+2d) | 0.5d → 1d? | 52d → -2.5d |
| 217 | 删除地址相关接口 | 2017-03-04 → 2017-03-06 (+2d) | 2017-03-06 → 2017-03-07 (+1d) | 0.5d → 1d? | 52d → -2.5d |
| 218 | 默认地址设置相关接口 | 2017-03-06 → 2017-03-07 (+1d) | 2017-03-06 → 2017-03-08 (+2d) | 0.5d → 1d? | 52d → -2.5d |
| 219 | 地址与订单关联接口 | 2017-03-06 → 2017-03-08 (+2d) | 2017-03-07 → 2017-03-09 (+2d) | 0.5d → 1d? | 52d → -2.5d |
| 220 | **站点设置** |  |  | 4d → 4d? |  |
| 221 | 新增站点功能实现功能实现及测试 |  |  | 1.5d → 1d? | 0d → 2d |
| 222 | 站点列表维护功能实现及测试 |  | 2017-03-15 → 2017-03-13 (-2d) | 2.5d → 1d? | 0d → 2d |
| 223 | **行政地区设置** |  |  | 2d → 2d? | 16d → none |
| 224 | 一级地区管理功能实现及测试 |  | 2017-03-15 → 2017-03-16 (+1d) | 0.5d → 1d? | 11.5d → -2d |
| 225 | 二级地区管理功能实现及测试 | 2017-03-15 → 2017-03-16 (+1d) | 2017-03-16 → 2017-03-17 (+1d) | 0.5d → 1d? | 11.5d → -2d |
| 226 | 三级地区管理功能实现及测试 | 2017-03-16 → 2017-03-17 (+1d) | 2017-03-16 → 2017-03-18 (+2d) | 0.5d → 1d? | 11.5d → -2d |
| 227 | 四级地区管理功能实现及测试 | 2017-03-16 → 2017-03-18 (+2d) | 2017-03-17 → 2017-03-20 (+3d) | 0.5d → 1d? | 11.5d → -2d |
| 228 | **物流配送优化** |  |  | 6d → 6d? | 16d → none |
| 229 | 配送模板管理功能实现及测试 |  | 2017-03-21 → 2017-03-18 (-3d) | 3.5d → 1d? | 11.5d → 4d |
| 230 | 区域配送管理功能实现及测试 | 2017-03-21 → 2017-03-18 (-3d) | 2017-03-24 → 2017-03-20 (-4d) | 2.5d → 1d? | 11.5d → 4d |
| 231 | **文章分类** |  |  | 3d → 3d? | 16d → none |
| 232 | 增加分类功能实现及测试 |  |  | 1.5d → 1d? | 11.5d → 1d |
| 233 | 文章分类列表管理功能实现及测试 |  | 2017-03-29 → 2017-03-28 (-1d) | 1.5d → 1d? | 11.5d → 1d |
| 234 | **文章管理** |  |  | 5d → 5d? | 16d → none |
| 235 | 新增文章功能实现及测试 |  | 2017-03-31 → 2017-03-30 (-1d) | 2.5d → 1d? | 11.5d → 3d |
| 236 | 文章列表管理功能实现及测试 | 2017-03-31 → 2017-03-30 (-1d) | 2017-04-04 → 2017-03-31 (-4d) | 2.5d → 1d? | 11.5d → 3d |
| 237 | **广告管理** |  |  | 4.5d → 4.5d? | 16d → none |
| 238 | 增加广告位功能实现及测试 |  | 2017-04-06 → 2017-04-05 (-1d) | 2d → 1d? | 11.5d → 2.5d |
| 239 | 广告位列表管理功能实现及测试 | 2017-04-06 → 2017-04-05 (-1d) | 2017-04-10 → 2017-04-06 (-4d) | 2.5d → 1d? | 11.5d → 2.5d |
| 240 | **首页管理** |  |  | 5d → 5d? | 16d → none |
| 241 | 增加栏目功能实现及测试 |  | 2017-04-12 → 2017-04-11 (-1d) | 2d → 1d? | 11.5d → 3d |
| 242 | 栏目列表维护功能实现及测试 | 2017-04-12 → 2017-04-11 (-1d) | 2017-04-15 → 2017-04-12 (-3d) | 3d → 1d? | 11.5d → 3d |
| 243 | **导航管理** |  |  | 5d → 5d? | 16d → none |
| 244 | 增加导航功能实现及测试 |  | 2017-04-18 → 2017-04-17 (-1d) | 2d → 1d? | 11.5d → 3d |
| 245 | 导航列表维护功能实现及测试 | 2017-04-18 → 2017-04-17 (-1d) | 2017-04-21 → 2017-04-18 (-3d) | 3d → 1d? | 11.5d → 3d |
| 246 | **友情链接管理** |  |  | 4d → 4d? | 16d → none |
| 247 | 增加友情链接功能实现及测试 |  | 2017-04-25 → 2017-04-24 (-1d) | 2d → 1d? | 11.5d → 2d |
| 248 | 友情链接列表维护功能实现及测试 | 2017-04-25 → 2017-04-24 (-1d) | 2017-04-27 → 2017-04-25 (-2d) | 2d → 1d? | 11.5d → 2d |
| 249 | **商品评价** |  |  | 9.5d → 9.5d? | 0d → none |
| 250 | 商品评价功能 |  | 2016-12-29 → 2016-12-27 (-2d) | 3d → 1d? | -9.5d → 5.5d |
| 251 | 商品评价图片上传功能 | 2016-12-29 → 2016-12-27 (-2d) | 2017-01-03 → 2016-12-28 (-6d) | 2d → 1d? | -9.5d → 5.5d |
| 252 | 评价审核 | 2017-01-03 → 2016-12-28 (-6d) | 2017-01-05 → 2016-12-29 (-7d) | 2.5d → 1d? | -9.5d → 5.5d |
| 253 | 评价查询功能 | 2017-01-05 → 2016-12-29 (-7d) | 2017-01-07 → 2016-12-30 (-8d) | 2d → 1d? | -9.5d → 5.5d |
| 254 | **订单管理** |  | 2017-02-10 → 2017-02-13 (+3d) | 23d → 23d? |  |
| 255 | 多状态订单查询 |  | 2017-01-11 → 2017-01-09 (-2d) | 3d → 1d? | -9.5d → 16d |
| 256 | 多状态订单统计 | 2017-01-11 → 2017-01-09 (-2d) | 2017-01-16 → 2017-01-10 (-6d) | 3d → 1d? | -9.5d → 16d |
| 257 | 订单详情查看 | 2017-01-16 → 2017-01-10 (-6d) | 2017-01-19 → 2017-01-11 (-8d) | 3d → 1d? | -9.5d → 16d |
| 258 | 订单取消\删除\收货功能 | 2017-01-19 → 2017-01-11 (-8d) | 2017-01-23 → 2017-01-12 (-11d) | 3d → 1d? | -9.5d → 16d |
| 259 | 查看物流功能 | 2017-01-23 → 2017-01-12 (-11d) | 2017-01-26 → 2017-01-13 (-13d) | 2.5d → 1d? | -9.5d → 16d |
| 260 | 订单回收站 | 2017-01-26 → 2017-01-13 (-13d) | 2017-02-04 → 2017-01-16 (-19d) | 2.5d → 1d? | -9.5d → 16d |
| 261 | 订单活动加优惠券计算规则 | 2017-02-04 → 2017-01-16 (-19d) | 2017-02-10 → 2017-01-17 (-24d) | 5d → 1d? | -9.5d → 16d |
| 262 | **地址管理** |  |  | 4d → 4d? | 0d → none |
| 263 | 新增地址 |  | 2017-02-14 → 2017-02-13 (-1d) | 2d → 1d? | 0d → 2d |
| 264 | 编辑、修改、删除地址 | 2017-02-14 → 2017-02-13 (-1d) | 2017-02-16 → 2017-02-14 (-2d) | 2d → 1d? | 0d → 2d |
| 265 | **优惠券功能app和pc** |  |  | 23d → 23d? | 0d → none |
| 266 | 创建多种类型优惠券 |  | 2017-02-22 → 2017-02-17 (-5d) | 5d → 1d? | 0d → 18d |
| 267 | 优惠券领券 | 2017-02-22 → 2017-02-17 (-5d) | 2017-02-28 → 2017-02-18 (-10d) | 4d → 1d? | 0d → 18d |
| 268 | 优惠券使用功能 | 2017-02-28 → 2017-02-18 (-10d) | 2017-03-03 → 2017-02-20 (-11d) | 3d → 1d? | 0d → 18d |
| 269 | 优惠券订单计算价格功能 | 2017-03-03 → 2017-02-20 (-11d) | 2017-03-09 → 2017-02-21 (-16d) | 5d → 1d? | 0d → 18d |
| 270 | 满赠功能 | 2017-03-09 → 2017-02-21 (-16d) | 2017-03-17 → 2017-02-22 (-23d) | 6d → 1d? | 0d → 18d |
| 271 | **供应商管理** |  |  | 4d → 4d? | 0d → none |
| 272 | 供应商维护 |  | 2017-03-20 → 2017-03-18 (-2d) | 2d → 1d? | 0d → 2d |
| 273 | 供应商编辑、修改、删除功能 | 2017-03-20 → 2017-03-18 (-2d) | 2017-03-22 → 2017-03-20 (-2d) | 2d → 1d? | 0d → 2d |
| 274 | **拆单功能app和pc** |  |  | 6d → 6d? | 0d → none |
| 275 | 根据供应商进行拆单 |  | 2017-03-27 → 2017-03-23 (-4d) | 3d → 1d? | 0d → 4d |
| 276 | 优化订单功能 | 2017-03-27 → 2017-03-23 (-4d) | 2017-03-30 → 2017-03-24 (-6d) | 3d → 1d? | 0d → 4d |
| 277 | **优化及其他功能** |  |  | 13d → 13d? | 0d → none |
| 278 | 商品批量导入功能 |  | 2017-04-03 → 2017-03-31 (-3d) | 3d → 1d? | 0d → 10d |
| 279 | 订单号生成规则优化 | 2017-04-03 → 2017-03-31 (-3d) | 2017-04-10 → 2017-04-01 (-9d) | 5d → 1d? | 0d → 10d |
| 280 | 秒杀功能优化解决爆库存问题 | 2017-04-10 → 2017-04-01 (-9d) | 2017-04-15 → 2017-04-03 (-12d) | 5d → 1d? | 0d → 10d |

| ID | Task | Start | Finish | Duration | Total float |
| --- | --- | --- | --- | --- | --- |
| 281 | **钱包管理** |  |  | 25d → 25d? | 0d → none |
| 282 | 收支明细 |  | 2017-04-19 → 2017-04-17 (-2d) | 3d → 1d? | 0d → 20d |
| 283 | 充值明细 | 2017-04-19 → 2017-04-17 (-2d) | 2017-04-24 → 2017-04-18 (-6d) | 3d → 1d? | 0d → 20d |
| 284 | 充值功能 | 2017-04-24 → 2017-04-18 (-6d) | 2017-04-28 → 2017-04-19 (-9d) | 4d → 1d? | 0d → 20d |
| 285 | 短信验证支付功能 | 2017-04-15 → 2017-04-10 (-5d) | 2017-04-20 → 2017-04-10 (-10d) | 4d → 1d? | 3d → 27.62d |
| 286 | 银行卡绑定 | 2017-04-20 → 2017-04-15 (-5d) | 2017-04-26 → 2017-04-17 (-9d) | 4d → 1d? | 12d → 23d |
| 287 | 支付密码设置及找回功能 | 2017-04-26 → 2017-04-17 (-9d) | 2017-05-02 → 2017-04-18 (-14d) | 5d → 1d? | 12d → 23d |
| 288 | 钱包支付 | 2017-04-28 → 2017-04-19 (-9d) | 2017-05-04 → 2017-04-20 (-14d) | 5d → 1d? | 0d → 20d |
| 289 | 提现功能 | 2017-05-04 → 2017-04-20 (-14d) | 2017-05-11 → 2017-04-21 (-20d) | 5d → 1d? | 5d → 20d |
| 290 | 快捷支付功能相关实现 | 2017-04-20 → 2017-04-15 (-5d) | 2017-05-01 → 2017-04-17 (-14d) | 8d → 1d? | 3d → 23d |
| 291 | 钱包资金安全相关设置 | 2017-05-04 → 2017-04-20 (-14d) | 2017-05-17 → 2017-04-21 (-26d) | 10d → 1d? | 0d → 20d |
| 292 | **会员等级设置** |  |  | 8.5d → 8.5d? |  |
| 293 | 会员等级设置 |  |  | 1.5d → 1d? | 1796.5d → 6.5d |
| 294 | 会员积分赠送规则 |  | 2017-02-14 → 2017-02-13 (-1d) | 2d → 1d? | 1.5d → 5.5d |
| 295 | 会员积分清零设置 | 2017-02-14 → 2017-02-13 (-1d) | 2017-02-16 → 2017-02-14 (-2d) | 2d → 1d? | 1.5d → 5.5d |
| 296 | 会员等级优惠设置 | 2017-02-16 → 2017-02-14 (-2d) | 2017-02-20 → 2017-02-15 (-5d) | 3d → 1d? | 1.5d → 5.5d |
| 297 | **乐币设置** |  |  | 16d → 16d? | 15d → none |
| 298 | 乐币设置 |  | 2017-02-23 → 2017-02-22 (-1d) | 2d → 1d? | 10.5d → 11d |
| 299 | 乐币消费规则 | 2017-02-23 → 2017-02-22 (-1d) | 2017-02-28 → 2017-02-23 (-5d) | 3d → 1d? | 10.5d → 11d |
| 300 | 乐币抵扣规则 | 2017-02-28 → 2017-02-23 (-5d) | 2017-03-04 → 2017-02-24 (-8d) | 4d → 1d? | 10.5d → 11d |
| 301 | 取消订单乐币退还规则 | 2017-03-04 → 2017-02-24 (-8d) | 2017-03-08 → 2017-02-27 (-9d) | 3d → 1d? | 10.5d → 11d |
| 302 | 乐币赠送相关接口 | 2017-03-08 → 2017-02-27 (-9d) | 2017-03-14 → 2017-02-28 (-14d) | 4d → 1d? | 10.5d → 11d |
| 303 | **用户登录信息** |  |  | 10d → 10d? | 15d → none |
| 304 | 用户登录个人资料信息 |  | 2017-03-16 → 2017-03-15 (-1d) | 2d → 1d? | 10.5d → 5d |
| 305 | 用户上传个人图片信息 | 2017-03-16 → 2017-03-15 (-1d) | 2017-03-18 → 2017-03-16 (-2d) | 1.5d → 1d? | 10.5d → 5d |
| 306 | 用户积分成长情况展示 | 2017-03-18 → 2017-03-16 (-2d) | 2017-03-21 → 2017-03-17 (-4d) | 2d → 1d? | 10.5d → 5d |
| 307 | 用户乐币使用情况详情 | 2017-03-21 → 2017-03-17 (-4d) | 2017-03-23 → 2017-03-18 (-5d) | 2.5d → 1d? | 10.5d → 5d |
| 308 | 用户代办事项 | 2017-03-23 → 2017-03-18 (-5d) | 2017-03-27 → 2017-03-20 (-7d) | 2d → 1d? | 10.5d → 5d |
| 309 | **待办事项** |  |  | 4.5d → 4.5d? | 15d → none |
| 310 | 后台待办事项资料展示 |  | 2017-03-29 → 2017-03-28 (-1d) | 2d → 1d? | 10.5d → 2.5d |
| 311 | 待办事项业务处理 | 2017-03-29 → 2017-03-28 (-1d) | 2017-04-01 → 2017-03-29 (-3d) | 2.5d → 1d? | 10.5d → 2.5d |
| 312 | **统计数据** |  |  | 7d → 7d? | 15d → none |
| 313 | 统计数据展示 |  | 2017-04-04 → 2017-04-03 (-1d) | 2.5d → 1d? | 10.5d → 4d |
| 314 | 数据分析展示面板 | 2017-04-04 → 2017-04-03 (-1d) | 2017-04-07 → 2017-04-04 (-3d) | 2.5d → 1d? | 10.5d → 4d |
| 315 | 统计数据导出功能 | 2017-04-07 → 2017-04-04 (-3d) | 2017-04-11 → 2017-04-05 (-6d) | 2d → 1d? | 10.5d → 4d |
| 316 | 关键字搜索、组合搜索 |  | 2017-04-15 → 2017-04-12 (-3d) | 4d → 1d? | 10.5d → 6.5d |
| 317 | **商品支持及售后** |  |  | 10.5d → 10.5d? | 15d → none |
| 318 | 售后信息资料录入 |  |  | 1d → 1d? | 10.5d → 3.5d |
| 319 | 售后信息资料及图片上传 |  |  | 1d → 1d? | 10.5d → 3.5d |
| 320 | 售后信息前台展示相关接口 |  |  | 1.5d → 1d? | 10.5d → 3.5d |
| 321 | 申请单查询 |  |  | 1d → 1d? | 10.5d → 3.5d |
| 322 | 售后单申请 |  | 2017-04-24 → 2017-04-21 (-3d) | 2d → 1d? | 10.5d → 3.5d |
| 323 | 售后进度 | 2017-04-24 → 2017-04-21 (-3d) | 2017-04-26 → 2017-04-24 (-2d) | 2d → 1d? | 10.5d → 3.5d |
| 324 | 物流功能 | 2017-04-26 → 2017-04-24 (-2d) | 2017-04-28 → 2017-04-25 (-3d) | 2d → 1d? | 10.5d → 3.5d |
